# Centrale PAC 18 MW - Granges-Paccot (20.133)

Schedule from MS Project XML, 2026-10-26 to 2027-11-12.

## Calendars

- Standard: Mon-Fri 08:00-12:00, 13:00-17:00; Sat-Sun off.

## Resources

| Resource |
| --- |
| A DEFINIR |
| ANSERMOT |
| ANTIGLIO |
| BILFINGER |
| CALORIFUGEAGE |
| DESPRAZ |
| ENTRETEC |
| GE |
| GETECH |
| HALG |
| RIEDO |
| WETTSTEIN |

## Schedule

| ID | WBS | Task | Duration | Start | Finish | Predecessors | Resources |
| --- | --- | --- | --- | --- | --- | --- | --- |
| 1 | 1 | **P0 - Gros œuvre, enveloppe et préparation** |  | 2026-10-26 | 2027-01-08 |  |  |
| 2 | 1.1 | Achèvement béton, étanchéité et enveloppe | 40d | 2026-10-26 | 2026-12-18 |  | ANTIGLIO |
| 3 | 1.2 | Socles et massifs PAC 1 à 4 | 15d | 2026-10-26 | 2026-11-13 | 2SS | ANTIGLIO |
| 4 | 1.3 | Socles armoires et coffrets (100 mm) | 10d | 2026-10-26 | 2026-11-06 | 2SS | ANTIGLIO |
| 5 | 1.4 | Réservations et percements | 15d | 2026-10-26 | 2026-11-13 |  | ANTIGLIO |
| 6 | 1.5 | Fenêtres | 15d | 2026-12-21 | 2027-01-08 | 2 | ANSERMOT |
| 7 | 2 | **P1 - Manutention et mise en place des équipements lourds** |  | 2026-10-26 | 2027-02-26 |  |  |
| 8 | 2.1 | Montage de l'accumulateur chaud | 60d | 2026-10-26 | 2027-01-15 |  | BILFINGER |
| 9 | 2.2 | Manutention et pose PAC 1 (NH3) | 15d | 2026-11-16 | 2026-12-04 | 3 | WETTSTEIN |
| 10 | 2.3 | Manutention et pose PAC 2 (NH3) | 15d | 2026-12-07 | 2026-12-25 | 3, 9 | WETTSTEIN |
| 11 | 2.4 | Centrales froid CO2 n°1 et n°2 | 50d | 2026-12-21 | 2027-02-26 | 2 | DESPRAZ |
| 12 | 2.5 | Vases d'expansion (section 07) | 15d | 2026-12-21 | 2027-01-08 | 2 | ENTRETEC |
| 13 | 2.6 | Manutention et pose PAC 3 (NH3) | 15d | 2026-12-28 | 2027-01-15 | 10 | WETTSTEIN |
| 14 | 2.7 | Manutention et pose PAC 4 (NH3) | 15d | 2027-01-18 | 2027-02-05 | 13 | WETTSTEIN |
| 15 | 2.8 | Fermeture de l'accès de manutention | 5d | 2027-02-08 | 2027-02-12 | 14 | ANTIGLIO |
| 16 | 3 | **P2 - Réseaux primaires** |  | 2026-10-26 | 2027-06-11 |  |  |
| 17 | 3.1 | Installations sanitaires | 15d | 2026-10-26 | 2026-11-13 |  | RIEDO |
| 18 | 3.2 | Serrurerie : garde-corps, échelles, caillebotis | 20d | 2026-12-21 | 2027-01-15 | 2 | ANSERMOT |
| 19 | 3.3 | Tuyauterie CO2 jusqu'aux echangeurs froid | 60d | 2027-02-08 | 2027-04-30 | 14, 11SS, 21SS | DESPRAZ |
| 20 | 3.4 | Echangeurs froid PAC 1 a 4 | 30d | 2027-02-08 | 2027-03-19 | 19SS | DESPRAZ |
| 21 | 3.5 | Tuyauterie hydraulique chaud (sections 00 à 06) | 80d | 2027-02-08 | 2027-05-28 | 14, 23SS | ENTRETEC |
| 22 | 3.6 | Pompage PAC | 20d | 2027-02-08 | 2027-03-05 | 21SS | ENTRETEC |
| 23 | 3.7 | Ventilation hygiénique - réseaux (section 42) | 60d | 2027-02-08 | 2027-04-30 | 14 | HALG |
| 24 | 3.8 | Ventilation commande, WC, vestiaire (section 41) | 15d | 2027-02-08 | 2027-02-26 | 23SS | HALG |
| 25 | 3.9 | Ventilation de sécurité CO2/NH3 - réseaux (section 43) | 50d | 2027-02-08 | 2027-04-16 | 23SS | HALG |
| 26 | 3.10 | Chemins de câbles et IEG | 80d | 2027-02-08 | 2027-05-28 | 14, 19SS | GETECH |
| 27 | 3.11 | Froid process hydraulique et armoires de refroidissement des locaux | 60d | 2027-03-22 | 2027-06-11 | 20 | ENTRETEC |

Notes:
- 1: Béton, étanchéité, socles et massifs, réservations. Quasiment terminé.
- 2: [T-ANT-010] Lot : ANTIGLIO / Systeme : GC / Locaux : * / Statut : en_cours
- 3: [T-ANT-020] Lot : ANTIGLIO / Systeme : GC / Locaux : CENT.N-2.07, CENT.N-2.10, CENT.N-2.12, CENT.N-2.15 / Statut : a_confirmer / Socles mûrs avant mise en charge. Délai de cure à faire confirmer par Wettstein. / RAISONS DES LIENS : / <- T-ANT-010 (DD) : Travaux de même nature, même entreprise
- 4: [T-ANT-025] Lot : ANTIGLIO / Systeme : GC / Locaux : CENT.N-2.21, CENT.N-2.04, CENT.N-2.19 / Statut : a_confirmer / Les armoires 1, 2, 3, 14 et 15 reposent sur socle 100 mm (liste des armoires). / RAISONS DES LIENS : / <- T-ANT-010 (DD) : Même entreprise
- 5: [T-ANT-030] Lot : ANTIGLIO / Systeme : GC / Locaux : * / Statut : a_confirmer
- 6: [T-ANS-010] Lot : ANSERMOT / Systeme : MEN / Locaux : * / Statut : non_adjuge / Mise hors d'air nécessaire avant mise sous tension durable des équipements électriques. / RAISONS DES LIENS : / <- T-ANT-010 (FD) : Supports et tableaux terminés
- 7: Descente et pose des PAC 1 à 4 et de l'accumulateur. Jalon pivot : tant que les machines ne sont pas en place, l'itinéraire de manutention doit rester libre.
- 8: [T-BIL-010] Lot : BILFINGER / Systeme : ACC / Locaux : CENT.N-2.24 / Statut : en_cours / Accumulateur chaud 5'000 kW, 2 x 2.5 MW. PLAN N-2 : diametre 8 m (9 m une fois isole), HAUTEUR 19 m. Il traverse donc plusieurs niveaux et se monte sur place : ce n'est pas un colis de manutention.
- 9: [T-WET-010] Lot : WETTSTEIN / Systeme : PAC-1 / Locaux : CENT.N-2.07 / Statut : a_confirmer / PLAN N-2 : l'acces se fait par la rampe exterieure (12% puis 6%), le couvert N-2.25, puis la porte 20 (type B, EI60) de 3.50 m de large sur 4.00 m de haut donnant dans PAC 4. Gabarit limite : 3.50 x 4.00 m. Q-01 et Q-02 repondues pour l'itineraire ; restent les dimensions hors-tout des machines. / RAISONS DES LIENS : / <- T-ANT-020 (FD) : Socle béton mûr avant mise en charge
- 10: [T-WET-020] Lot : WETTSTEIN / Systeme : PAC-2 / Locaux : CENT.N-2.10 / Statut : a_confirmer / PLAN N-2 : l'acces se fait par la rampe exterieure (12% puis 6%), le couvert N-2.25, puis la porte 20 (type B, EI60) de 3.50 m de large sur 4.00 m de haut donnant dans PAC 4. Gabarit limite : 3.50 x 4.00 m. Q-01 et Q-02 repondues pour l'itineraire ; restent les dimensions hors-tout des machines. / RAISONS DES LIENS : / <- T-ANT-020 (FD) : Socle béton mûr / <- T-WET-010 (FD) : Même moyen de levage
- 11: [T-DES-005] Lot : DESPRAZ / Systeme : FROID-CO2 / Locaux : CENT.N-2.09, CENT.N-2.14 / Statut : a_confirmer / CONTRADICTION DE DOCUMENTS : la maquette ARC nomme N-2.09 et N-2.14 'Commande 1-2' et 'Commande 3-4', les schémas Groupe E les nomment 'Centrale froid n°1' et 'n°2'. Voir Q-13. / RAISONS DES LIENS : / <- T-ANT-010 (FD) : Locaux disponibles
- 12: [T-ENT-020] Lot : ENTRETEC / Systeme : EXPANSION / Locaux : CENT.N-2.19 / Statut : a_confirmer / 7 vases de 5'000 L. À traiter comme de la manutention lourde, pas comme de la tuyauterie : même contrainte de gabarit que les PAC. Voir Q-02. / RAISONS DES LIENS : / <- T-ANT-010 (FD) : Local disponible
- 13: [T-WET-030] Lot : WETTSTEIN / Systeme : PAC-3 / Locaux : CENT.N-2.12 / Statut : a_confirmer / PLAN N-2 : l'acces se fait par la rampe exterieure (12% puis 6%), le couvert N-2.25, puis la porte 20 (type B, EI60) de 3.50 m de large sur 4.00 m de haut donnant dans PAC 4. Gabarit limite : 3.50 x 4.00 m. Q-01 et Q-02 repondues pour l'itineraire ; restent les dimensions hors-tout des machines. / RAISONS DES LIENS : / <- T-WET-020 (FD) : Même moyen de levage
- 14: [T-WET-040] Lot : WETTSTEIN / Systeme : PAC-4 / Locaux : CENT.N-2.15 / Statut : a_confirmer / PLAN N-2 : l'acces se fait par la rampe exterieure (12% puis 6%), le couvert N-2.25, puis la porte 20 (type B, EI60) de 3.50 m de large sur 4.00 m de haut donnant dans PAC 4. Gabarit limite : 3.50 x 4.00 m. Q-01 et Q-02 repondues pour l'itineraire ; restent les dimensions hors-tout des machines. / RAISONS DES LIENS : / <- T-WET-030 (FD) : Même moyen de levage
- 15: [T-ANT-040] Lot : ANTIGLIO / Systeme : GC / Locaux : CENT.N-2.25, CENT.N-2.26 / Statut : a_confirmer / Voir Q-01 : l'itinéraire réel reste à confirmer. / RAISONS DES LIENS : / <- T-WET-040 (FD) : Dernier colis lourd rentré
- 16: Ordre de passage dans les volumes partagés : le plus encombrant et le moins déformable d'abord. Ventilation, puis hydraulique, puis CO2, puis chemins de câbles.
- 17: [T-RIE-010] Lot : RIEDO / Systeme : SAN / Locaux : CENT.N-2.23, CENT.N-2.22 / Statut : a_confirmer / Lot très localisé : 3,5 m2 de sanitaire et 9,1 m2 de vestiaire. Large marge de calage.
- 18: [T-ANS-020] Lot : ANSERMOT / Systeme : SER / Locaux : * / Statut : non_adjuge / À scinder : garde-corps au plus tôt pour la sécurité des autres lots, caillebotis après les réseaux qu'ils surplombent. / RAISONS DES LIENS : / <- T-ANT-010 (FD) : Supports béton disponibles
- 19: [T-DES-010] Lot : DESPRAZ / Systeme : FROID-CO2 / Locaux : CENT.N-2.05, CENT.N-2.06, CENT.N-2.16 / Statut : a_confirmer / Limite de prestation : Despraz pose les conduites CO2 jusqu'aux echangeurs froid. L'hydraulique en aval est chez Entretec. Local d'introduction CO2 : N-2.05. PN6, 3 bars. / RAISONS DES LIENS : / <- T-WET-040 (FD) : Itinéraire de manutention libéré / <- T-DES-005 (DD) : Même entreprise, réseau tiré depuis les centrales froid / <- T-ENT-010 (DD) : Passe après les gros diamètres hydrauliques dans les volumes partagés
- 20: [T-DES-015] Lot : DESPRAZ / Systeme : FROID-CO2 / Locaux : CENT.N-2.07, CENT.N-2.10, CENT.N-2.12, CENT.N-2.15 / Statut : a_confirmer / Fournis et poses par Despraz. 180 kW par echangeur pour PAC 1-2, 110 kW pour PAC 3-4. Interface directe avec le circuit hydraulique froid d'Entretec (T-ENT-090). / RAISONS DES LIENS : / <- T-DES-010 (DD) : Même campagne de tuyauterie
- 21: [T-ENT-010] Lot : ENTRETEC / Systeme : HYD-CHAUD / Locaux : CENT.N-2.19 / Statut : a_confirmer / PN16, pression statique 11 bars. Circulateurs Grundfos NBG 484 kg, vannes de régulation RTK 401 kg : manutention interne à prévoir. / RAISONS DES LIENS : / <- T-WET-040 (FD) : Itinéraire de manutention libéré / <- T-HAL-010 (DD) : Passe après la ventilation dans les volumes partagés, mais peut démarrer en local dédié
- 22: [T-ENT-030] Lot : ENTRETEC / Systeme : HYD-CHAUD / Locaux : CENT.N-2.18 / Statut : a_confirmer / RAISONS DES LIENS : / <- T-ENT-010 (DD) : Même entreprise, réseaux coordonnés
- 23: [T-HAL-010] Lot : HALG / Systeme : VENT-HYG / Locaux : CENT.N-2.01, CENT.N-2.03, CENT.N-2.04, CENT.N-2.08, CENT.N-2.13, CENT.N-2.18, CENT.N-2.19, CENT.N-1.02 / Statut : a_confirmer / Premier des réseaux : le plus encombrant et le moins déformable. Débits : MT 1'240, hydraulique chaud 890, TGBT 790 m3/h. Comprend le free-cooling du local MT. / RAISONS DES LIENS : / <- T-WET-040 (FD) : L'itinéraire de manutention reste libre jusqu'à la dernière machine
- 24: [T-HAL-020] Lot : HALG / Systeme : VENT-WC / Locaux : CENT.N-2.21, CENT.N-2.22, CENT.N-2.23, CENT.N-1.07 / Statut : a_confirmer / 75 m3/h vestiaire et sanitaires. Lot localisé, large marge de calage. / RAISONS DES LIENS : / <- T-HAL-010 (DD) : Même entreprise
- 25: [T-HAL-030] Lot : HALG / Systeme : VENT-SECU / Locaux : CENT.N-2.05, CENT.N-2.07, CENT.N-2.10, CENT.N-2.12, CENT.N-2.15, CENT.N-1.02, CENT.N-1.03 / Statut : a_confirmer / SYSTÈME DE SÉCURITÉ. Cheminée d'extraction de secours dédiée, gaines galvanisées étanchéité classe D, clapets coupe-feu. Extraction fuite NH3 5'500 m3/h et fuite CO2 12'100 m3/h par local. Schéma encore en pré-exécution (16.10.2026). / RAISONS DES LIENS : / <- T-HAL-010 (DD) : Même entreprise, réseaux coordonnés
- 26: [T-GET-030] Lot : GETECH / Systeme : IEG / Locaux : * / Statut : a_confirmer / Maquette ELE : 905 segments de chemin de câbles, 615 accessoires, 647 luminaires, 34 appareillages. / RAISONS DES LIENS : / <- T-WET-040 (FD) : Itinéraire libéré : 905 chemins de câbles suffisent à boucher une circulation / <- T-DES-010 (DD) : Dernier des réseaux : le chemin de câbles est le plus adaptable, il contourne
- 27: [T-ENT-090] Lot : ENTRETEC / Systeme : FROID-HYD / Locaux : CENT.N-2.01, CENT.N-2.03, CENT.N-2.04, CENT.N-2.08, CENT.N-2.13, CENT.N-2.18, CENT.N-2.19 / Statut : a_confirmer / Circuit hydraulique froid 16/21 degres en aval des echangeurs. MT 97 kW, variateurs/commande 70 kW, locaux PAC 55 kW chacun, pompage 25 kW, hydraulique chaud 15 kW, TGBT 10 kW. Conditionne la mise en charge nominale des variateurs. / RAISONS DES LIENS : / <- T-DES-015 (FD) : Echangeurs froid poses : l'hydraulique se raccorde dessus

| ID | WBS | Task | Duration | Start | Finish | Predecessors | Constraint | Resources |
| --- | --- | --- | --- | --- | --- | --- | --- | --- |
| 28 | 4 | **P3 - Électricité de puissance** |  | 2026-10-26 | 2027-03-12 |  |  |  |
| 29 | 4.1 | Infrastructure MT et transformateurs | 60d | 2026-10-26 | 2027-01-15 |  |  | GETECH |
| 30 | 4.2 | Tableaux TGBT | 60d | 2026-10-26 | 2027-01-15 |  |  | GETECH |
| 31 | 4.3 | Armoires variateurs 1-2 et 3-4 | 40d | 2026-10-26 | 2026-12-18 | 30SS |  | GETECH |
| 32 | 4.4 | Raccordement extérieur (MT réseau et conduites CAD) | 60d | 2026-10-26 | 2027-01-15 |  |  | GE |
| 33 | 4.5 | STAP - génie civil, équipements et armoire de commande | 100d | 2026-10-26 | 2027-03-12 |  |  | A DEFINIR |
| 34 | 4.6 | Armoires et coffrets de commande (15 unités) | 20d | 2026-11-09 | 2026-12-04 | 4, 31SS |  | GETECH |
| 35 | 5 | **P4 - Raccordements aux machines** |  | 2026-12-07 | 2027-07-23 |  |  |  |
| 36 | 5.1 | Raccordement des sondes de l'accumulateur | 5d | 2026-12-07 | 2026-12-11 | 47 |  | GE |
| 37 | 5.2 | Raccordement hydraulique sur accumulateur | 10d | 2026-12-07 | 2026-12-18 | 47 |  | ENTRETEC |
| 38 | 5.3 | Automates et régulation MCR (API, RIO, HMI, Scada) | 50d | 2026-12-07 | 2027-02-12 | 34 |  | GE |
| 39 | 5.4 | Raccordement hydraulique chaud sur PAC 1 à 4 | 20d | 2027-05-31 | 2027-06-25 | 14, 21 |  | ENTRETEC |
| 40 | 5.5 | Départ CAD et départ ZI (étape 1) | 20d | 2027-05-31 | 2027-06-25 | 21 |  | ENTRETEC |
| 41 | 5.6 | Câblage de puissance des PAC | 20d | 2027-05-31 | 2027-06-25 | 26, 31, 14 |  | GETECH |
| 42 | 5.7 | Détection incendie et détection gaz NH3 / CO2 | 20d | 2027-05-31 | 2027-06-25 | 26 |  | GETECH |
| 43 | 5.8 | Raccordement des sondes et actionneurs (hors accumulateur) | 40d | 2027-05-31 | 2027-07-23 | 21, 19, 38SS |  | GE |
| 44 | 5.9 | Portes intérieures | 15d | 2027-05-31 | 2027-06-18 | 26 |  | ANSERMOT |
| 45 | 5.10 | Raccordement des chaufferies mobiles gaz (2 x 2.5 MW) | 15d | 2027-06-28 | 2027-07-16 | 40 |  | ENTRETEC |
| 46 | 6 | **P5 - Épreuves et essais** |  | 2026-11-30 | 2027-10-01 |  |  |  |
| 47 | 6.1 | Épreuve de pression de l'accumulateur | 5d | 2026-11-30 | 2026-12-04 | 8 | start no earlier than 2026-11-30 | BILFINGER |
| 48 | 6.2 | Calorifugeage de l'accumulateur | 30d | 2026-12-14 | 2027-01-22 | 47, 36 |  | CALORIFUGEAGE |
| 49 | 6.3 | Épreuve d'étanchéité des circuits NH3 | 10d | 2027-02-08 | 2027-02-19 | 14 |  | WETTSTEIN |
| 50 | 6.4 | Portes du chemin de manutention | 5d | 2027-02-08 | 2027-02-12 | 14 |  | ANSERMOT |
| 51 | 6.5 | Mise sous tension MT/BT et TGBT | 10d | 2027-05-03 | 2027-05-14 | 29, 30, 32, 23 |  | GETECH |
| 52 | 6.6 | Rebouchages et calfeutrements coupe-feu | 15d | 2027-05-31 | 2027-06-18 | 26 |  | ANTIGLIO |
| 53 | 6.7 | Rinçage et remplissage des réseaux hydrauliques | 10d | 2027-05-31 | 2027-06-11 | 21, 22, 12 |  | ENTRETEC |
| 54 | 6.8 | Épreuve d'étanchéité du circuit CO2 | 10d | 2027-06-14 | 2027-06-25 | 20, 27 |  | DESPRAZ |
| 55 | 6.9 | Épreuve de pression des réseaux hydrauliques | 5d | 2027-06-14 | 2027-06-18 | 53 |  | ENTRETEC |
| 56 | 6.10 | Tirage au vide du circuit CO2 | 5d | 2027-06-28 | 2027-07-02 | 54 |  | DESPRAZ |
| 57 | 6.11 | Mise en service et essais de la ventilation de secours et de la détection gaz | 15d | 2027-06-28 | 2027-07-16 | 25, 42, 51, 52 |  | HALG |
| 58 | 6.12 | Charge en NH3 des PAC 1 à 4 | 5d | 2027-07-19 | 2027-07-23 | 49, 57, 51 |  | WETTSTEIN |
| 59 | 6.13 | Charge en CO2 | 5d | 2027-07-19 | 2027-07-23 | 56, 57, 51 |  | DESPRAZ |
| 60 | 6.14 | Calorifugeage des tuyauteries chaud et froid | 50d | 2027-07-26 | 2027-10-01 | 55, 43 |  | CALORIFUGEAGE |

Notes:
- 28: MT/BT, transformateurs, TGBT, armoires variateurs et commande. Mené en parallèle de P2 car conditionné par les délais de livraison.
- 29: [T-GET-010] Lot : GETECH / Systeme : ELEC-MT / Locaux : CENT.N-2.01 / Statut : a_confirmer / Délai de livraison du transformateur à renseigner : candidat n°1 au chemin critique. Voir Q-04.
- 30: [T-GET-020] Lot : GETECH / Systeme : TGBT / Locaux : CENT.N-2.04 / Statut : a_confirmer / Délai de livraison à renseigner. Même contrainte de gabarit que les PAC : local à 7,00 m, circulation à 4,10 m.
- 31: [T-GET-040] Lot : GETECH / Systeme : TGBT / Locaux : CENT.N-2.08, CENT.N-2.13 / Statut : a_confirmer / RAISONS DES LIENS : / <- T-GET-020 (DD) : Même campagne de livraison, à confirmer
- 32: [T-GE-020] Lot : GE / Systeme : RACC-EXT / Locaux : CENT.N+0.03 / Statut : a_confirmer / À coordonner avec la surface bituminée (3'352 m2) et la rampe, qui sert aussi d'itinéraire de manutention.
- 33: [T-STA-010] Lot : A DEFINIR / Systeme : STAP / Locaux : STAP / Statut : HORS_PERIMETRE_CONNU / Le synoptique chaud s'intitule 'Centrale PAC 18MW (STAP et Centrale)' et la liste des armoires comporte une armoire STAP (1200x2000x400, 400/230 V, socle 100 mm, API STAP au concept MCR). La STAP est donc dans le périmètre du projet, mais absente de la maquette architecturale et de la liste des adjudications communiquée. Voir Q-18.
- 34: [T-GET-050] Lot : GETECH / Systeme : MCR / Locaux : CENT.N-2.21, CENT.N-2.04, CENT.N-2.19, CENT.N-2.03, CENT.N-2.08, CENT.N-2.13 / Statut : a_confirmer / Voir data/armoires.json. 5 armoires sur 15 n'ont pas encore de local attribué, dont celle de la ventilation de secours et celle de l'accumulateur. Voir Q-16. / RAISONS DES LIENS : / <- T-ANT-025 (FD) : Socles de 100 mm coulés / <- T-GET-040 (DD) : Même campagne
- 35: CO2, hydraulique, puissance et régulation sur les PAC et l'accumulateur, dans les locaux.
- 36: [T-GE-010] Lot : GE / Systeme : ACC / Locaux : CENT.N-2.24 / Statut : a_confirmer / RIO 2 - Accu du concept MCR : 6 circuits instrumentés. Les doigts de gant doivent être posés et repérés avant calorifugeage. / RAISONS DES LIENS : / <- T-BIL-020 (FD) : Épreuve réalisée avant instrumentation définitive
- 37: [T-ENT-050] Lot : ENTRETEC / Systeme : ACC / Locaux : CENT.N-2.24 / Statut : a_confirmer / RAISONS DES LIENS : / <- T-BIL-020 (FD) : Épreuve de l'enveloppe avant raccordement des réseaux
- 38: [T-GE-030] Lot : GE / Systeme : MCR / Locaux : CENT.N-2.21, CENT.N-2.09, CENT.N-2.14 / Statut : a_confirmer / Concept MCR : API General, HMI, RIO 1 Distribution, RIO 2 Accu, RIO 3 PAC 1, RIO 4 PAC 2, API STAP. Profinet/Modbus IP, MBUS/Modbus RTU, Scada IEC 104. Concept daté de février 2024, à revalider. Voir Q-17. / RAISONS DES LIENS : / <- T-GET-050 (FD) : Armoires en place
- 39: [T-ENT-040] Lot : ENTRETEC / Systeme : HYD-CHAUD / Locaux : CENT.N-2.07, CENT.N-2.10, CENT.N-2.12, CENT.N-2.15 / Statut : a_confirmer / Limite de prestation confirmée : Wettstein livre la machine dans le local, Entretec vient s'y raccorder. / RAISONS DES LIENS : / <- T-WET-040 (FD) : Machines posées et calées : le raccordement se relève sur l'ouvrage réel / <- T-ENT-010 (FD) : Réseau amont réalisé
- 40: [T-ENT-055] Lot : ENTRETEC / Systeme : HYD-CHAUD / Locaux : CENT.N-2.19 / Statut : a_confirmer / Le synoptique distingue 'Départ ZI 19.119 - Etape 1 / Final' et 'Départ CADFR - Etape 1 / Final'. Le projet est phasé. Voir Q-14. / RAISONS DES LIENS : / <- T-ENT-010 (FD) : Collecteurs réalisés
- 41: [T-GET-060] Lot : GETECH / Systeme : IEG / Locaux : CENT.N-2.07, CENT.N-2.10, CENT.N-2.12, CENT.N-2.15 / Statut : a_confirmer / RAISONS DES LIENS : / <- T-GET-030 (FD) : Chemins de câbles posés / <- T-GET-040 (FD) : Variateurs en place pour tirer aux deux extrémités / <- T-WET-040 (FD) : Machines en place
- 42: [T-GET-070] Lot : GETECH / Systeme : DI / Locaux : * / Statut : a_confirmer / À TRANCHER : la détection gaz NH3 et CO2 est-elle dans ce lot, chez Wettstein, ou chez Despraz ? C'est une sécurité des personnes qui pilote la ventilation de secours. Voir Q-05. / RAISONS DES LIENS : / <- T-GET-030 (FD) : Supports de câblage disponibles
- 43: [T-GE-040] Lot : GE / Systeme : MCR / Locaux : * / Statut : a_confirmer / Comprend les 4 sondes de température intérieure centrale (rez et galerie) du synoptique chaud. Doit précéder le calorifugeage. / RAISONS DES LIENS : / <- T-ENT-010 (FD) : Tuyauterie posée, doigts de gant disponibles / <- T-DES-010 (FD) : Réseau CO2 posé / <- T-GE-030 (DD) : Même entreprise
- 44: [T-ANS-030] Lot : ANSERMOT / Systeme : MEN / Locaux : * / Statut : non_adjuge / Les locaux NH3 et CO2 ont probablement des exigences spécifiques (sens d'ouverture, résistance, étanchéité). À vérifier avec le concept de sécurité. / RAISONS DES LIENS : / <- T-GET-030 (FD) : Réseaux passés : une porte posée tôt est une porte abîmée ou démontée
- 45: [T-ENT-080] Lot : ENTRETEC / Systeme : HYD-CHAUD / Locaux : CENT.N+0.03 / Statut : a_confirmer / LEVIER DE PLANNING : échangeurs PN6/PN25 sur le synoptique chaud. Les chaufferies mobiles permettent d'alimenter le CAD avant que les PAC soient en service, donc de découpler la date de livraison de chaleur de celle de la mise en service des machines. Voir Q-15. / RAISONS DES LIENS : / <- T-ENT-055 (FD) : Collecteurs de départ disponibles
- 46: Rinçage, épreuves de pression, étanchéité CO2, tirage au vide, charge, mise sous tension.
- 47: [T-BIL-020] Lot : BILFINGER / Systeme : ACC / Locaux : CENT.N-2.24 / Statut : date_ferme / SEULE DATE FERME DU DOSSIER. Sert d'ancrage au calage. / RAISONS DES LIENS : / <- T-BIL-010 (FD) : Enveloppe terminée avant mise sous pression
- 48: [T-CAL-010] Lot : CALORIFUGEAGE / Systeme : ACC / Locaux : CENT.N-2.24 / Statut : BLOQUE / ALERTE : lot non adjuge, qui suit immediatement une date ferme. PLAN N-2 : l'accumulateur fait 19 m de haut pour 8 m de diametre, soit environ 500 m2 d'isolation en hauteur (passage de 8 a 9 m isole). C'est un chantier d'acces en hauteur, pas un appoint de calorifugeage. / RAISONS DES LIENS : / <- T-BIL-020 (FD) : On n'isole pas avant d'avoir éprouvé : une reprise de fuite impose de déshabiller / <- T-GE-010 (FD) : Sondes et doigts de gant posés, sinon on rouvre l'isolation
- 49: [T-WET-050] Lot : WETTSTEIN / Systeme : NH3 / Locaux : CENT.N-2.07, CENT.N-2.10, CENT.N-2.12, CENT.N-2.15 / Statut : a_confirmer / RAISONS DES LIENS : / <- T-WET-040 (FD) : Machines en place et assemblées
- 50: [T-ANS-040] Lot : ANSERMOT / Systeme : MEN / Locaux : CENT.N-2.25, CENT.N-2.26, CENT.N-2.11 / Statut : non_adjuge / RAISONS DES LIENS : / <- T-WET-040 (FD) : Après le dernier colis lourd
- 51: [T-GET-080] Lot : GETECH / Systeme : TGBT / Locaux : CENT.N-2.01, CENT.N-2.04 / Statut : a_confirmer / JALON MAJEUR. Voir Q-07 : le free-cooling suffit-il à la première mise sous tension, le froid CO2 ne venant qu'ensuite pour la pleine charge ? / RAISONS DES LIENS : / <- T-GET-010 (FD) : Poste MT terminé / <- T-GET-020 (FD) : TGBT terminé / <- T-GE-020 (FD) : Raccordement au réseau extérieur effectif / <- T-HAL-010 (FD) : Ventilation hygiénique et free-cooling du local MT disponibles : c'est ce qui permet la première mise sous tension avant que le froid CO2 ne soit en service
- 52: [T-ANT-035] Lot : ANTIGLIO / Systeme : GC / Locaux : * / Statut : a_confirmer / Les clapets coupe-feu (CCF) des schémas 41, 42 et 43 supposent une sectorisation achevée et contrôlée. / RAISONS DES LIENS : / <- T-GET-030 (FD) : Dernier réseau passé : on ne rebouche qu'une fois tous les percements traversés
- 53: [T-ENT-060] Lot : ENTRETEC / Systeme : HYD-CHAUD / Locaux : * / Statut : a_confirmer / RÈGLE DURE : rincer AVANT de raccorder définitivement aux échangeurs des PAC. / RAISONS DES LIENS : / <- T-ENT-010 (FD) : Réseau complet / <- T-ENT-030 (FD) : Pompes posées pour assurer la circulation de rinçage / <- T-ENT-020 (FD) : Expansion en service avant mise en eau
- 54: [T-DES-030] Lot : DESPRAZ / Systeme : FROID-CO2 / Locaux : * / Statut : a_confirmer / RAISONS DES LIENS : / <- T-DES-015 (FD) : Toutes les soudures terminées : une seule reprise invalide l'épreuve / <- T-ENT-090 (FD) : Circuit complet, armoires de refroidissement raccordées
- 55: [T-ENT-070] Lot : ENTRETEC / Systeme : HYD-CHAUD / Locaux : * / Statut : a_confirmer / RAISONS DES LIENS : / <- T-ENT-060 (FD) : Réseau rempli
- 56: [T-DES-040] Lot : DESPRAZ / Systeme : FROID-CO2 / Locaux : * / Statut : a_confirmer / RAISONS DES LIENS : / <- T-DES-030 (FD) : Étanchéité prouvée avant mise sous vide
- 57: [T-HAL-050] Lot : HALG / Systeme : VENT-SECU / Locaux : * / Statut : a_confirmer / JALON DE SÉCURITÉ : conditionne la charge NH3 et la charge CO2. Aucun fluide frigorigène n'entre dans le bâtiment avant que ce système soit éprouvé. / RAISONS DES LIENS : / <- T-HAL-030 (FD) : Installation terminée / <- T-GET-070 (FD) : Détection NH3 et CO2 raccordée et fonctionnelle / <- T-GET-080 (FD) : Alimentation secourue disponible / <- T-ANT-035 (FD) : Sectorisation coupe-feu achevée : les clapets ne valent que dans une paroi étanche
- 58: [T-WET-060] Lot : WETTSTEIN / Systeme : NH3 / Locaux : CENT.N-2.07, CENT.N-2.10, CENT.N-2.12, CENT.N-2.15 / Statut : a_confirmer / L'ammoniac est toxique et inflammable. La ventilation de secours extrait 5'500 m3/h par local PAC en cas de fuite NH3. / RAISONS DES LIENS : / <- T-WET-050 (FD) : Étanchéité prouvée / <- T-HAL-050 (FD) : RÈGLE DE SÉCURITÉ : ventilation de secours et détection NH3 en service avant toute introduction d'ammoniac dans le bâtiment / <- T-GET-080 (FD) : Machines alimentables
- 59: [T-DES-050] Lot : DESPRAZ / Systeme : FROID-CO2 / Locaux : CENT.N-2.05 / Statut : a_confirmer / Charge par le local d'introduction CO2 N-2.05. / RAISONS DES LIENS : / <- T-DES-040 (FD) : Vide tenu / <- T-HAL-050 (FD) : RÈGLE DE SÉCURITÉ : ventilation de secours et détection CO2 en service avant charge (12'100 m3/h d'extraction par local en cas de fuite) / <- T-GET-080 (FD) : Centrales froid alimentables
- 60: [T-CAL-020] Lot : CALORIFUGEAGE / Systeme : HYD-CHAUD / Locaux : * / Statut : BLOQUE / ALERTE : lot non adjugé et bloquant pour la réception. / RAISONS DES LIENS : / <- T-ENT-070 (FD) : On n'isole pas une tuyauterie non éprouvée / <- T-GE-040 (FD) : Instrumentation posée avant habillage

| ID | WBS | Task | Duration | Start | Finish | Predecessors | Resources |
| --- | --- | --- | --- | --- | --- | --- | --- |
| 61 | 7 | **P6 - Mise en service et réception** |  | 2027-05-17 | 2027-11-12 |  |  |
| 62 | 7.1 | Mise en service de la ventilation hygiénique et WC | 10d | 2027-05-17 | 2027-05-28 | 23, 24, 51 | HALG |
| 63 | 7.2 | Mise en charge nominale des variateurs | 10d | 2027-06-14 | 2027-06-25 | 51, 27 | GETECH |
| 64 | 7.3 | Essais de boucles et de régulation | 30d | 2027-07-26 | 2027-09-03 | 43, 51 | GE |
| 65 | 7.4 | Essais fonctionnels intégrés et mise en service des PAC | 40d | 2027-09-06 | 2027-10-29 | 64, 58, 59, 55, 62, 63 | GE |
| 66 | 7.5 | Réception de l'installation | 10d | 2027-11-01 | 2027-11-12 | 65, 48, 60, 50, 57 | GE |

Notes:
- 61: Essais de régulation, essais fonctionnels intégrés, réception.
- 62: [T-HAL-040] Lot : HALG / Systeme : VENT-HYG / Locaux : * / Statut : a_confirmer / RAISONS DES LIENS : / <- T-HAL-010 (FD) : Installation terminée / <- T-HAL-020 (FD) : Installation terminée / <- T-GET-080 (FD) : Alimentation définitive disponible
- 63: [T-GET-090] Lot : GETECH / Systeme : TGBT / Locaux : CENT.N-2.08, CENT.N-2.13 / Statut : a_confirmer / RAISONS DES LIENS : / <- T-GET-080 (FD) : Tension disponible / <- T-ENT-090 (FD) : RÈGLE DURE : les variateurs ne tournent pas en charge sans leur refroidissement (70 kW par local var/com)
- 64: [T-GE-050] Lot : GE / Systeme : MCR / Locaux : * / Statut : a_confirmer / RAISONS DES LIENS : / <- T-GE-040 (FD) : Instrumentation raccordée / <- T-GET-080 (FD) : Alimentation disponible
- 65: [T-GE-060] Lot : GE / Systeme : MCR / Locaux : * / Statut : a_confirmer / Campagne à cinq entreprises simultanées (Wettstein, Despraz, Entretec, Groupe E Tech, Groupe E). À planifier comme une campagne, pas comme une tâche. Pilote à désigner, voir Q-10. / RAISONS DES LIENS : / <- T-GE-050 (FD) : Boucles validées / <- T-WET-060 (FD) : Circuits NH3 chargés / <- T-DES-050 (FD) : Circuit CO2 chargé / <- T-ENT-070 (FD) : Hydraulique éprouvée et remplie / <- T-HAL-040 (FD) : Ventilation en service / <- T-GET-090 (FD) : Variateurs en charge nominale
- 66: [T-REC-010] Lot : GE / Systeme : RECEPTION / Locaux : * / Statut : a_confirmer / RAISONS DES LIENS : / <- T-GE-060 (FD) : Essais fonctionnels concluants / <- T-CAL-010 (FD) : Accumulateur isolé / <- T-CAL-020 (FD) : Tuyauteries calorifugées / <- T-ANS-040 (FD) : Bâtiment refermé / <- T-HAL-050 (FD) : Systèmes de sécurité réceptionnés
